# IT系统功能恢复进度

Schedule from a web Gantt chart, 2024-11-15 to 2025-03-06.
Saturdays and Sundays are off

## Schedule

| ID | WBS | Task | Duration | Start | Finish |
| --- | --- | --- | --- | --- | --- |
| 2 | 1 | **骨干网恢复** | 80d | 2024-11-15 | 2025-03-06 |
| 3 | 1.1 | 核心交换板卡级清理维护 | 15d | 2024-11-15 | 2024-12-05 |
| 4 | 1.2 | 35台链路层交换机清理维护 | 15d | 2024-12-06 | 2024-12-26 |
| 5 | 1.3 | 15台区域接入层交换机安装调试 | 15d | 2024-12-27 | 2025-01-16 |
| 6 | 1.4 | 港口无线链路设备安装调试 | 20d | 2025-01-17 | 2025-02-13 |
| 7 | 1.5 | 骨干网调试及优化 | 15d | 2025-02-14 | 2025-03-06 |
| 8 | 2 | **信息系统及服务恢复** | 1d | 2024-11-15 | 2024-11-15 |
| 9 | 2.1 | 电子邮件系统更新 | 1d | 2024-11-15 | 2024-11-15 |
| 10 | 2.2 | DC-APP服务器授权更新 | 1d | 2024-11-15 | 2024-11-15 |
| 11 | 2.3 | ISP带宽升级 | 1d | 2024-11-15 | 2024-11-15 |
| 12 | 2.4 | 域终端病毒防护系统部署测试 | 1d | 2024-11-15 | 2024-11-15 |
| 13 | 3 | **PC终端设备恢复** | 1d | 2024-11-15 | 2024-11-15 |
| 14 | 3.1 | Microsoft-E5授权购买 | 1d | 2024-11-15 | 2024-11-15 |
| 15 | 3.2 | Windows11系统更新 | 1d | 2024-11-15 | 2024-11-15 |
| 16 | 3.3 | 终端硬件维护 | 1d | 2024-11-15 | 2024-11-15 |
| 17 | 3.4 | 终端硬件升级及测试 | 1d | 2024-11-15 | 2024-11-15 |
| 18 | 4 | **打印设备恢复** | 1d | 2024-11-15 | 2024-11-15 |
| 19 | 4.1 | 打印机清洁保养维护 | 1d | 2024-11-15 | 2024-11-15 |
| 20 | 4.2 | 打印机耗材订购 | 1d | 2024-11-15 | 2024-11-15 |
| 21 | 4.3 | 打印机故障修复 | 1d | 2024-11-15 | 2024-11-15 |
| 22 | 5 | **程控电话系统恢复** | 1d | 2024-11-15 | 2024-11-15 |
| 23 | 5.1 | IpOffice500语音网关清洁维护 | 1d | 2024-11-15 | 2024-11-15 |
| 24 | 5.2 | IpOffice500语音网关R12固件更新 | 1d | 2024-11-15 | 2024-11-15 |
| 25 | 5.3 | 配套HP服务器更新 | 1d | 2024-11-15 | 2024-11-15 |

| ID | WBS | Task | Duration | Start | Finish |
| --- | --- | --- | --- | --- | --- |
| 26 | 6 | **生活营地无线网络覆盖升级** | 1d | 2024-11-15 | 2024-11-15 |
| 27 | 6.1 | 升级零件采购 | 1d | 2024-11-15 | 2024-11-15 |
| 28 | 6.2 | 线缆敷设及设备安装 | 1d | 2024-11-15 | 2024-11-15 |
| 29 | 6.3 | 配置及调试 | 1d | 2024-11-15 | 2024-11-15 |
